# Gantt chart

Schedule from MS Project, 2019-07-01 to 2020-06-30, status date 2019-07-01.

## Calendars

- Standard: Mon-Fri 08:00-12:00, 13:00-17:00; Sat-Sun off.

## Resources

| Resource |
| --- |
| Nigina |
| John |
| Magda |
| Matt |
| Najwa |
| Nora |
| Julie |
| Gaurav |

## Schedule

| ID | WBS | Task | Type | Duration | Start | Finish | Predecessors | Resources | Work | Baseline cost |
| --- | --- | --- | --- | --- | --- | --- | --- | --- | --- | --- |
| 1 | 1 | **Initiating** |  | 31d | 2019-07-01 | 2019-08-12 |  |  | 488h |  |
| 2 | 1.1 | Identify key stakeholders | manual | 1d | 2019-07-01 | 2019-07-01 |  | Nigina | 8h | 720 |
| 3 | 1.2 | Prepare project charter | manual | 1d | 2019-07-02 | 2019-07-02 | 2 | Nigina | 8h | 720 |
| 4 | 1.3 | Hold project kick-off meeting | manual | 1d | 2019-07-03 | 2019-07-03 | 3 | Nigina; John; Magda; Matt; Najwa; Nora; Julie; Gaurav | 64h | 2,640 |
| 5 | 1.4 | Research competitor web-based applications | manual | 10d | 2019-07-04 | 2019-07-17 | 4 | John; Magda | 160h | 7,200 |
| 6 | 1.5 | Develop initial functions the web-app must include | manual | 10d | 2019-07-18 | 2019-07-31 | 5 | John; Magda | 160h | 7,200 |
| 7 | 1.6 | Develop a weighted decision matrix to evaluate each function and its possible contribution to the overall project success | manual | 3d | 2019-08-01 | 2019-08-05 | 6 | Magda; Matt | 48h | 2,160 |
| 8 | 1.7 | Prepare initial financial section of the business case | manual | 5d | 2019-08-06 | 2019-08-12 | 7 | Nigina | 40h | 3,600 |
| 9 | 2 | **Planning** |  | 39d | 2019-08-13 | 2019-10-04 |  |  | 1144h |  |
| 10 | 2.1 | Hold team planning meeting | manual | 1d | 2019-08-13 | 2019-08-13 | 1 | Nigina; John; Magda; Matt; Najwa; Nora | 48h | 2,520 |
| 11 | 2.2 | **Prepare scope management** |  | 1d | 2019-08-13 | 2019-08-13 |  |  | 224h |  |
| 12 | 2.2.1 | Plan scope management | manual | 1d | 2019-08-14 | 2019-08-14 | 10 | Nigina | 8h | 720 |
| 13 | 2.2.2 | Collect requirements | manual | 2d | 2019-08-15 | 2019-08-16 | 12 | John; Najwa; Nora | 48h | 2,160 |
| 14 | 2.2.3 | Prepare scope statement | manual | 3d | 2019-08-19 | 2019-08-21 | 13 | Nigina | 24h | 2,160 |
| 15 | 2.2.4 | Develop WBS | milestone, manual | 3d | 2019-08-22 | 2019-08-26 | 14 | Nigina; John; Magda; Matt; Najwa; Nora | 144h | 2,160 |
| 16 | 2.3 | **Prepare schedule baseline** |  | 1d | 2019-08-13 | 2019-08-13 | 11 |  | 544h |  |
| 17 | 2.3.1 | Determine task resources | manual | 3d | 2019-08-27 | 2019-08-29 | 15 | Nigina; John; Magda; Matt; Najwa; Nora | 144h | 7,560 |
| 18 | 2.3.2 | Create resource calendar | manual | 2d | 2019-08-30 | 2019-09-02 | 17 | Nigina | 16h | 1,440 |
| 19 | 2.3.3 | Create a network diagram | manual | 1d | 2019-09-03 | 2019-09-03 | 18 | Nigina | 8h | 720 |
| 20 | 2.3.4 | Determine task durations | manual | 2d | 2019-09-04 | 2019-09-05 | 19 | Nigina; John; Magda; Matt; Najwa; Nora | 96h | 5,040 |
| 21 | 2.3.5 | Determine task dependencies | manual | 2d | 2019-09-06 | 2019-09-09 | 20 | Nigina; John; Magda; Matt; Najwa; Nora | 96h | 5,040 |
| 22 | 2.3.6 | Establish critical path | manual | 1d | 2019-09-10 | 2019-09-10 | 21 | Nigina | 8h | 720 |
| 23 | 2.3.7 | Perform PERT analysis | manual | 1d | 2019-09-11 | 2019-09-11 | 22 | Nigina | 8h | 720 |
| 24 | 2.3.8 | Create draft Gantt chart | manual | 3d | 2019-09-12 | 2019-09-16 | 23 | Nigina | 24h | 2,160 |
| 25 | 2.3.9 | Review and finalize Gantt chart | milestone, manual | 3d | 2019-09-17 | 2019-09-19 | 24 | Nigina; John; Magda; Matt; Najwa; Nora | 144h | 7,560 |

| ID | WBS | Task | Type | Duration | Start | Finish | Predecessors | Total slack | Free slack | Constraint | Resources | Work | Baseline cost |
| --- | --- | --- | --- | --- | --- | --- | --- | --- | --- | --- | --- | --- | --- |
| 26 | 2.4 | **Prepare cost baseline** |  | 1d | 2019-08-13 | 2019-08-13 | 16 |  |  |  |  | 256h |  |
| 27 | 2.4.1 | Plan cost management | manual | 1d | 2019-09-20 | 2019-09-20 | 25 |  |  |  | Nigina | 8h | 720 |
| 28 | 2.4.2 | Estimate cost | manual | 5d | 2019-09-23 | 2019-09-27 | 27 |  |  |  | Nigina; John; Magda; Matt; Najwa; Nora | 240h | 12,600 |
| 29 | 2.4.3 | Determine budget | milestone, manual | 1d | 2019-09-30 | 2019-09-30 | 28 |  |  |  | Nigina | 8h | 720 |
| 30 | 2.5 | Plan procurement management | manual | 1d | 2019-10-01 | 2019-10-01 | 26, 16 |  |  |  | Nora | 8h | 360 |
| 31 | 2.6 | Plan human resource management | milestone, manual | 1d | 2019-10-02 | 2019-10-02 | 26, 16 |  |  |  | Nigina | 8h | 720 |
| 32 | 2.7 | Plan communication management | manual | 1d | 2019-10-03 | 2019-10-03 | 26, 16 |  |  |  | Nigina | 8h | 720 |
| 33 | 2.8 | Identify, discuss and prioritize risks | manual | 1d | 2019-10-04 | 2019-10-04 | 26, 16, 31, 32 |  |  |  | Nigina; John; Magda; Matt; Najwa; Nora | 48h | 2,520 |
| 34 | 3 | **Executing** |  | 184d | 2019-10-07 | 2020-06-18 |  |  |  |  |  | 1552h |  |
| 35 | 3.1 | **Customize the web-app developed by the ABC Corp** |  | 1d | 2019-10-07 | 2019-10-07 |  |  |  |  |  | 240h |  |
| 36 | 3.1.1 | Analyze research reports | manual | 2d | 2019-10-07 | 2019-10-08 | 5 |  |  |  | John; Magda; Matt; Najwa; Nora | 80h | 3,600 |
| 37 | 3.1.2 | Prepare assessment report of the web-app developed by the ABC Corp | manual | 5d | 2019-10-09 | 2019-10-15 | 36 |  |  |  | John; Magda | 80h | 3,600 |
| 38 | 3.1.3 | Prepare the initial web-app change proposal | milestone, manual | 5d | 2019-10-16 | 2019-10-22 | 37 |  |  |  | Matt; Najwa | 80h | 3,600 |
| 39 | 3.2 | **Develop the web-app content** |  | 1d | 2019-10-07 | 2019-10-07 | 35 |  |  |  |  | 1312h |  |
| 40 | 3.2.1 | Create a list of video games sorted | manual | 15d | 2019-10-23 | 2019-11-12 | 38 |  |  |  | Matt; Najwa | 240h | 10,800 |
| 41 | 3.2.2 | Develop subscription plans | manual | 2d | 2019-11-13 | 2019-11-14 | 40 |  |  |  | John; Magda | 32h | 1,440 |
| 42 | 3.2.3 | List video games search options | manual | 2d | 2019-11-15 | 2019-11-18 | 41 |  |  |  | John; Matt | 32h | 1,440 |
| 43 | 3.2.4 | Create FAQ page content | manual | 3d | 2019-11-19 | 2019-11-21 | 42 |  |  |  | John; Magda | 48h | 2,160 |
| 44 | 3.2.5 | Develop automated support content | manual | 15d | 2019-11-22 | 2019-12-12 | 43 |  |  |  | John; Magda; Matt; Najwa | 480h | 21,600 |
| 45 | 3.2.6 | Develop final database design | manual | 30d | 2019-12-13 | 2020-01-23 | 44 |  |  |  | Matt; Najwa | 480h | 21,600 |
| 46 | 4 | **Determine third-party software to include in the web-app** |  | 1d? | 2019-07-01 | 2019-07-01 | 39 |  |  |  |  | 600h |  |
| 47 | 4.1 | Research and compare differrent options | manual | 15d | 2020-01-23 | 2020-02-12 |  |  |  |  | Nora | 120h | 5,400 |
| 48 | 4.2 | Select software and sign contracts | milestone, manual | 15d | 2020-02-13 | 2020-03-04 | 47 |  |  |  | Nora; Nigina | 240h | 81,200 |
| 49 | 4.3 | Prepare final web-app change request | manual | 15d | 2020-03-05 | 2020-03-25 | 45, 48 |  |  |  | John; Magda | 240h | 10,800 |
| 50 | 5 | Finalize the web-app |  | 15d | 2020-03-26 | 2020-04-15 | 49 | 25d | 0d | start no earlier than 2020-01-23 | Gaurav; Matt; Najwa | 360h | 71,600 |

| ID | WBS | Task | Type | Duration | Start | Finish | Predecessors | Resources | Work | Baseline cost |
| --- | --- | --- | --- | --- | --- | --- | --- | --- | --- | --- |
| 51 | 6 | **Test the web-app** |  | 1d? | 2019-07-01 | 2019-07-01 |  |  | 320h |  |
| 52 | 6.1 | Test the performance of the website | manual | 10d | 2020-04-16 | 2020-04-29 | 50 | Matt; Najwa | 160h | 7,200 |
| 53 | 6.2 | Test the security of the website | manual | 10d | 2020-04-30 | 2020-05-13 | 52 | Matt; Najwa | 160h | 7,200 |
| 54 | 7 | **Promote the web-app** |  | 1d? | 2019-07-01 | 2019-07-01 |  |  | 400h |  |
| 55 | 7.1 | Research and select advertisement platforms | manual | 10d | 2020-05-14 | 2020-05-27 | 50 | John; Magda | 160h | 7,200 |
| 56 | 7.2 | Create advertisement content | manual | 10d | 2020-05-28 | 2020-06-10 | 55 | John; Magda | 160h | 7,200 |
| 57 | 7.3 | Launch advertisement | manual | 5d | 2020-06-11 | 2020-06-17 | 56 | John; Magda | 80h | 53,600 |
| 58 | 8 | Roll-out the web-app | milestone, manual | 1d | 2020-06-18 | 2020-06-18 | 52, 53 | John; Magda | 16h | 720 |
| 59 | 9 | Measure project benefits | manual | 1d | 2020-06-19 | 2020-06-19 | 58 | Nigina | 8h |  |
| 60 | 10 | **Monitoring and controlling** |  | 1d? | 2019-07-01 | 2019-07-01 |  |  | 120h |  |
| 61 | 10.1 | Progress reports | manual | 5d | 2019-07-01 | 2019-07-05 |  | Nigina | 40h | 19,200 |
| 62 | 10.2 | Change requests | manual | 5d | 2019-07-01 | 2019-07-05 |  | Nigina | 40h | 19,200 |
| 63 | 10.3 | Quality testing reports | manual | 5d | 2019-07-01 | 2019-07-05 |  | Nigina | 40h | 19,200 |
| 64 | 11 | **Closing** |  | 1d? | 2019-07-01 | 2019-07-01 |  |  | 64h |  |
| 65 | 11.1 | Prepare final project report | manual | 5d | 2020-06-19 | 2020-06-25 | 58 | Nigina | 40h | 3,600 |
| 66 | 11.2 | Prepare final project presentation | manual | 2d | 2020-06-26 | 2020-06-29 | 65 | Nigina | 16h | 1,440 |
| 67 | 11.3 | Lessons learned | manual | 1d | 2020-06-30 | 2020-06-30 | 66 | Nigina | 8h | 720 |
